# Project Angel

Schedule from ProjectLibre, 2024-12-02 to 2025-04-28.

## Calendars

- Standard: Mon-Fri 08:00-12:00, 13:00-17:00; Sat-Sun off.

## Resources

| Resource | Group | Rate |
| --- | --- | --- |
| Unassigned |  |  |
| Billy Tse | CMSC Solution Limited | 1600 |
| Jack Chan | CMSC Solution Limited | 1400 |
| Kelvin Luk | CMSC Solution Limited | 2000 |
| Datasets |  | 30000 |
| Cloud Infrastructure |  | 40000 |
| GPU VM Instance |  | 18000 |
| Cybersecurity Consultancy |  | 20000 |
| Lawyers Consultancy |  | 30000 |
| Psychologist/ Psychotherapist Consultancy |  | 40000 |
| Testers |  | 130000 |
| Application Store Fee |  | 1000 |
| Software Subscriptions |  | 3000 |
| Marketing - Webinar |  | 10000 |
| Marketing - Advertisement |  | 15000 |

## Schedule

| ID | WBS | Task | Duration | Start | Finish | Predecessors | Resources |
| --- | --- | --- | --- | --- | --- | --- | --- |
| 1 | 1 | **Project Angel** | 106d | 2024-12-02 | 2025-04-28 |  |  |
| 2 | 1.1 | **1. Project Initiation** | 16d | 2024-12-02 | 2024-12-23 |  |  |
| 3 | 1.1.1 | **1.1. Project Management** | 10d | 2024-12-02 | 2024-12-13 |  |  |
| 4 | 1.1.1.1 | **1.1.1. Conduct Kick-off Meeting** | 1d | 2024-12-02 | 2024-12-02 |  | Billy Tse; Jack Chan; Kelvin Luk |
| 5 | 1.1.1.1.1 | 1.1.1.1. Prepare Meeting Agenda | 1d | 2024-12-02 | 2024-12-02 |  |  |
| 6 | 1.1.1.1.2 | 1.1.1.2. Gather Stakeholder Input | 1d | 2024-12-02 | 2024-12-02 | 5SS |  |
| 7 | 1.1.1.1.3 | 1.1.1.3. Document Meeting Outcomes | 1d | 2024-12-02 | 2024-12-02 | 6SS |  |
| 8 | 1.1.1.2 | **1.1.2. Define Project Scope** | 2d | 2024-12-03 | 2024-12-04 | 4 | Billy Tse; Jack Chan; Kelvin Luk |
| 9 | 1.1.1.2.1 | 1.1.2.1. Identify Key Deliverables | 1d | 2024-12-03 | 2024-12-03 |  |  |
| 10 | 1.1.1.2.2 | 1.1.2.2. Establish Boundaries and Exclusions | 1d | 2024-12-04 | 2024-12-04 | 9 |  |
| 11 | 1.1.1.3 | **1.1.3. Develop Project Charter** | 2d | 2024-12-05 | 2024-12-06 | 8 | Billy Tse; Jack Chan; Kelvin Luk |
| 12 | 1.1.1.3.1 | 1.1.3.1. Draft Initial Charter Document | 1d | 2024-12-05 | 2024-12-05 |  |  |
| 13 | 1.1.1.3.2 | 1.1.3.2. Review and Finalise with HKJC Project Team | 1d | 2024-12-06 | 2024-12-06 | 12 |  |
| 14 | 1.1.1.4 | **1.1.4. Create WBS** | 5d | 2024-12-09 | 2024-12-13 | 11 | Billy Tse; Jack Chan; Kelvin Luk |
| 15 | 1.1.1.4.1 | 1.1.4.1. Develop Initial WBS Draft | 3d | 2024-12-09 | 2024-12-11 |  |  |
| 16 | 1.1.1.4.2 | 1.1.4.2. Review WBS with HKJC Project Team | 2d | 2024-12-12 | 2024-12-13 | 15 |  |
| 17 | 1.1.2 | **1.3. Communication Management** | 2d | 2024-12-16 | 2024-12-17 |  |  |
| 18 | 1.1.2.1 | **1.3.1. Establish Communication Plan** | 1d | 2024-12-16 | 2024-12-16 | 14 | Kelvin Luk |
| 19 | 1.1.2.1.1 | 1.3.1.1. Define Communication Channels | 1d | 2024-12-16 | 2024-12-16 |  |  |
| 20 | 1.1.2.1.2 | 1.3.1.2. Set Meeting Frequencies | 1d | 2024-12-16 | 2024-12-16 | 19SS |  |
| 21 | 1.1.2.2 | **1.3.2. Conduct Regular Team Meetings** | 1d | 2024-12-17 | 2024-12-17 | 18 | Kelvin Luk |
| 22 | 1.1.2.2.1 | 1.3.2.1. Schedule Recurring Meetings | 1d | 2024-12-17 | 2024-12-17 |  |  |
| 23 | 1.1.2.2.2 | 1.3.2.2. Prepare Meeting Notes and Action Items | 1d | 2024-12-17 | 2024-12-17 | 22SS |  |
| 24 | 1.1.3 | **1.4. Risk Management** | 3d | 2024-12-18 | 2024-12-20 |  |  |
| 25 | 1.1.3.1 | **1.4.1. Identify Potential Risks** | 1d | 2024-12-18 | 2024-12-18 | 21 | Billy Tse; Jack Chan; Kelvin Luk |
| 26 | 1.1.3.1.1 | 1.4.1.1. Conduct Brainstorming Sessions | 1d | 2024-12-18 | 2024-12-18 |  |  |
| 27 | 1.1.3.1.2 | 1.4.1.2. Review Historical Data from Similar Projects | 1d | 2024-12-18 | 2024-12-18 | 26SS |  |

| ID | WBS | Task | Duration | Start | Finish | Predecessors | Resources |
| --- | --- | --- | --- | --- | --- | --- | --- |
| 28 | 1.1.3.2 | **1.4.2. Analyse Impact of Risks** | 1d | 2024-12-19 | 2024-12-19 | 25 | Billy Tse; Jack Chan; Kelvin Luk |
| 29 | 1.1.3.2.1 | 1.4.2.1. Assess Probability and Severity | 1d | 2024-12-19 | 2024-12-19 |  |  |
| 30 | 1.1.3.2.2 | 1.4.2.2. Prioritise Risks for Attention | 1d | 2024-12-19 | 2024-12-19 | 29SS |  |
| 31 | 1.1.3.3 | **1.4.3. Develop Risk Mitigation Strategies** | 1d | 2024-12-20 | 2024-12-20 | 28 | Billy Tse; Jack Chan; Kelvin Luk |
| 32 | 1.1.3.3.1 | 1.4.3.1. Create Action Plans for High-Priority Risks | 1d | 2024-12-20 | 2024-12-20 |  |  |
| 33 | 1.1.3.3.2 | 1.4.3.2. Assign Responsibility for Mitigation Measures | 1d | 2024-12-20 | 2024-12-20 | 32SS |  |
| 34 | 1.1.4 | **1.5. Budget Management** | 1d | 2024-12-23 | 2024-12-23 |  |  |
| 35 | 1.1.4.1 | **1.5.1. Define Budget Requirements** | 1d | 2024-12-23 | 2024-12-23 | 31 | Kelvin Luk |
| 36 | 1.1.4.1.1 | 1.5.1.1. Estimate Costs for Each Project Phase | 1d | 2024-12-23 | 2024-12-23 |  |  |
| 37 | 1.1.4.1.2 | 1.5.1.2. Prepare Budget Proposal | 1d | 2024-12-23 | 2024-12-23 | 36SS |  |
| 38 | 1.1.5 | Milestone: Initial Project Planning | 0d | 2024-12-23 | 2024-12-23 | 34 |  |
| 39 | 1.2 | **4. Infrastructure Setup** | 8d | 2024-12-23 | 2025-01-01 |  |  |
| 40 | 1.2.1 | **4.1. Backend Infrastructure** | 5d | 2024-12-23 | 2024-12-27 |  |  |
| 41 | 1.2.1.1 | **4.1.1. Set Up Servers and Hosting** | 2d | 2024-12-23 | 2024-12-24 | 31 | Billy Tse; Cloud Infrastructure |
| 42 | 1.2.1.1.1 | 4.1.1.1. Choose Hosting Provider and Server Specifications | 1d | 2024-12-23 | 2024-12-23 |  |  |
| 43 | 1.2.1.1.2 | 4.1.1.2. Deploy Virtual Machines and Containers | 2d | 2024-12-23 | 2024-12-24 | 42SS |  |
| 44 | 1.2.1.2 | **4.1.2. Configure Databases** | 2d | 2024-12-25 | 2024-12-26 | 41 | Billy Tse |
| 45 | 1.2.1.2.1 | 4.1.2.1. Select Database Management System | 1d | 2024-12-25 | 2024-12-25 |  |  |
| 46 | 1.2.1.2.2 | 4.1.2.2. Set Up Database Schemas and Relationships | 2d | 2024-12-25 | 2024-12-26 | 45SS |  |
| 47 | 1.2.1.3 | **4.1.3. Implement Load Balancing** | 1d | 2024-12-27 | 2024-12-27 | 44 | Billy Tse |
| 48 | 1.2.1.3.1 | 4.1.3.1. Configure Load Balancers for Traffic Distribution | 1d | 2024-12-27 | 2024-12-27 |  |  |
| 49 | 1.2.1.3.2 | 4.1.3.2. Set Up Health Checks for Server Reliability | 1d | 2024-12-27 | 2024-12-27 | 48SS |  |
| 50 | 1.2.2 | **4.2. DevOps Implementation** | 5d | 2024-12-23 | 2024-12-27 |  |  |
| 51 | 1.2.2.1 | **4.2.1. Establish CI/CD Pipelines** | 2d | 2024-12-23 | 2024-12-24 | 31 | Jack Chan; Software Subscriptions |
| 52 | 1.2.2.1.1 | 4.2.1.1. Choose CI/CD Tools | 1d | 2024-12-23 | 2024-12-23 |  |  |
| 53 | 1.2.2.1.2 | 4.2.1.2. Define Build and Deployment Processes | 2d | 2024-12-23 | 2024-12-24 | 52SS |  |

| ID | WBS | Task | Duration | Start | Finish | Predecessors | Resources |
| --- | --- | --- | --- | --- | --- | --- | --- |
| 54 | 1.2.2.2 | **4.2.2. Automate Deployment Processes** | 2d | 2024-12-25 | 2024-12-26 | 51 | Jack Chan |
| 55 | 1.2.2.2.1 | 4.2.2.1. Create Deployment Scripts | 2d | 2024-12-25 | 2024-12-26 |  |  |
| 56 | 1.2.2.2.2 | 4.2.2.2. Integrate Automated Testing in Pipeline | 2d | 2024-12-25 | 2024-12-26 | 55SS |  |
| 57 | 1.2.2.3 | **4.2.3. Monitor System Performance** | 1d | 2024-12-27 | 2024-12-27 | 54 | Jack Chan |
| 58 | 1.2.2.3.1 | 4.2.3.1. Set Up Monitoring Tools | 1d | 2024-12-27 | 2024-12-27 |  |  |
| 59 | 1.2.2.3.2 | 4.2.3.2. Define Key Performance Indicators | 1d | 2024-12-27 | 2024-12-27 | 58SS |  |
| 60 | 1.2.3 | **4.3. Security and Compliance** | 4d | 2024-12-24 | 2024-12-27 |  |  |
| 61 | 1.2.3.1 | **4.3.1. Implement Firewall and Security Protocols** | 1d | 2024-12-24 | 2024-12-24 | 35 | Kelvin Luk |
| 62 | 1.2.3.1.1 | 4.3.1.1. Configure Network Firewalls | 1d | 2024-12-24 | 2024-12-24 |  |  |
| 63 | 1.2.3.1.2 | 4.3.1.2. Apply Security Protocols | 1d | 2024-12-24 | 2024-12-24 | 62SS |  |
| 64 | 1.2.3.2 | **4.3.2. Ensure Compliance with Data Protection Laws** | 2d | 2024-12-25 | 2024-12-26 | 61 | Kelvin Luk |
| 65 | 1.2.3.2.1 | 4.3.2.1. Review Relevant Data Protection Regulations (e.g., GDPR, PDPO) | 2d | 2024-12-25 | 2024-12-26 |  |  |
| 66 | 1.2.3.2.2 | 4.3.2.2. Implement Data Handling Policies | 2d | 2024-12-25 | 2024-12-26 | 65SS |  |
| 67 | 1.2.3.3 | **4.3.3. Set Up Regular Security Audits** | 1d | 2024-12-27 | 2024-12-27 | 64 | Kelvin Luk |
| 68 | 1.2.3.3.1 | 4.3.3.1. Schedule Regular Audit Intervals | 1d | 2024-12-27 | 2024-12-27 |  |  |
| 69 | 1.2.3.3.2 | 4.3.3.2. Document and Address Audit Findings | 1d | 2024-12-27 | 2024-12-27 | 68SS |  |
| 70 | 1.2.4 | **4.4. Scalability Planning** | 3d | 2024-12-30 | 2025-01-01 |  |  |
| 71 | 1.2.4.1 | **4.4.1. Design for Horizontal Scaling** | 3d | 2024-12-30 | 2025-01-01 | 47 | Kelvin Luk |
| 72 | 1.2.4.1.1 | 4.4.1.1. Define Architecture for Scalability | 1d | 2024-12-30 | 2024-12-30 |  |  |
| 73 | 1.2.4.1.2 | 4.4.1.2. Implement Microservices as Necessary | 2d | 2024-12-31 | 2025-01-01 | 72 |  |
| 74 | 1.2.4.2 | **4.4.2. Implement Caching Strategies** | 3d | 2024-12-30 | 2025-01-01 | 47 | Jack Chan |
| 75 | 1.2.4.2.1 | 4.4.2.1. Choose Caching Solutions | 1d | 2024-12-30 | 2024-12-30 |  |  |
| 76 | 1.2.4.2.2 | 4.4.2.2. Configure Cache Expiry Policies | 3d | 2024-12-30 | 2025-01-01 | 75SS |  |
| 77 | 1.2.4.3 | **4.4.3. Prepare for Increased User Load** | 3d | 2024-12-30 | 2025-01-01 | 47 | Billy Tse |
| 78 | 1.2.4.3.1 | 4.4.3.1. Conduct Load Testing Simulations | 1d | 2024-12-30 | 2024-12-30 |  |  |
| 79 | 1.2.4.3.2 | 4.4.3.2. Optimise Resources Based on Test Results | 2d | 2024-12-31 | 2025-01-01 | 78 |  |
| 80 | 1.2.5 | Milestone: Infrastructure Setup | 0d | 2025-01-01 | 2025-01-01 | 70 |  |

| ID | WBS | Task | Duration | Start | Finish | Predecessors | Resources |
| --- | --- | --- | --- | --- | --- | --- | --- |
| 81 | 1.3 | **5. Mobile Application Development** | 45d | 2025-01-02 | 2025-03-05 |  |  |
| 82 | 1.3.1 | **5.1. Requirements Analysis** | 8d | 2025-01-02 | 2025-01-13 |  |  |
| 83 | 1.3.1.1 | **5.1.1. Gather User Requirements** | 5d | 2025-01-02 | 2025-01-08 | 74 | Jack Chan |
| 84 | 1.3.1.1.1 | 5.1.1.1. Conduct User Interviews and Surveys | 5d | 2025-01-02 | 2025-01-08 |  |  |
| 85 | 1.3.1.1.2 | 5.1.1.2. Analyse Competitor Applications for Features | 3d | 2025-01-06 | 2025-01-08 | 84FF |  |
| 86 | 1.3.1.2 | **5.1.2. Define Functional Specifications** | 2d | 2025-01-09 | 2025-01-10 | 83 | Jack Chan |
| 87 | 1.3.1.2.1 | 5.1.2.1. Document Core Features and User Stories | 1d | 2025-01-09 | 2025-01-09 |  |  |
| 88 | 1.3.1.2.2 | 5.1.2.2. Review Functional Specifications with HKJC Project Team | 1d | 2025-01-10 | 2025-01-10 | 87 |  |
| 89 | 1.3.1.3 | **5.1.3. Outline Technical Requirements** | 1d | 2025-01-13 | 2025-01-13 | 86 | Jack Chan |
| 90 | 1.3.1.3.1 | 5.1.3.1. Identify Platform-Specific Requirements (iOS/Android) | 1d | 2025-01-13 | 2025-01-13 |  |  |
| 91 | 1.3.1.3.2 | 5.1.3.2. Specify Performance and Scalability Needs | 1d | 2025-01-13 | 2025-01-13 | 90SS |  |
| 92 | 1.3.2 | **5.2. UI/UX Design** | 8d | 2025-01-14 | 2025-01-23 |  |  |
| 93 | 1.3.2.1 | **5.2.1. Create Wireframes and Mockups** | 3d | 2025-01-14 | 2025-01-16 | 89 | Jack Chan |
| 94 | 1.3.2.1.1 | 5.2.1.1. Develop Low-Fidelity Wireframes | 3d | 2025-01-14 | 2025-01-16 |  |  |
| 95 | 1.3.2.1.2 | 5.2.1.2. Create High-Fidelity Mockups for Key Screens | 2d | 2025-01-15 | 2025-01-16 | 94FF |  |
| 96 | 1.3.2.2 | **5.2.2. Design User Interface Elements** | 2d | 2025-01-17 | 2025-01-20 | 93 | Jack Chan |
| 97 | 1.3.2.2.1 | 5.2.2.1. Define Color Schemes and Typography | 1d | 2025-01-17 | 2025-01-17 |  |  |
| 98 | 1.3.2.2.2 | 5.2.2.2. Create Reusable UI Component Library | 1d | 2025-01-20 | 2025-01-20 | 97 |  |
| 99 | 1.3.2.3 | **5.2.3. Develop User Experience Flow** | 1d | 2025-01-21 | 2025-01-21 | 96 | Jack Chan |
| 100 | 1.3.2.3.1 | 5.2.3.1. Map User Journey and Interactions | 1d | 2025-01-21 | 2025-01-21 |  |  |
| 101 | 1.3.2.3.2 | 5.2.3.2. Create User Flow Diagrams | 1d | 2025-01-21 | 2025-01-21 | 100SS |  |
| 102 | 1.3.2.4 | **5.2.4. Conduct Usability Testing** | 2d | 2025-01-22 | 2025-01-23 | 99 | Jack Chan |
| 103 | 1.3.2.4.1 | 5.2.4.1. Recruit HKJC Testers for Testing | 2d | 2025-01-22 | 2025-01-23 |  |  |
| 104 | 1.3.2.4.2 | 5.2.4.2. Analyse Feedback and Iterate on Design | 1d | 2025-01-23 | 2025-01-23 | 103FF |  |

| ID | WBS | Task | Duration | Start | Finish | Predecessors | Resources |
| --- | --- | --- | --- | --- | --- | --- | --- |
| 105 | 1.3.3 | **5.3. Front-End Development** | 5d | 2025-01-24 | 2025-01-30 |  |  |
| 106 | 1.3.3.1 | **5.3.1. Set Up Development Environment** | 1d | 2025-01-24 | 2025-01-24 | 102 | Jack Chan |
| 107 | 1.3.3.1.1 | 5.3.1.1. Install Required Tools and Frameworks | 1d | 2025-01-24 | 2025-01-24 |  |  |
| 108 | 1.3.3.1.2 | 5.3.1.2. Configure Version Control Systems | 1d | 2025-01-24 | 2025-01-24 | 107SS |  |
| 109 | 1.3.3.2 | **5.3.2. Develop User Interface Components** | 2d | 2025-01-27 | 2025-01-28 | 106 | Jack Chan |
| 110 | 1.3.3.2.1 | 5.3.2.1. Code Core UI Elements | 2d | 2025-01-27 | 2025-01-28 |  |  |
| 111 | 1.3.3.2.2 | 5.3.2.2. Implement Navigation and Routing | 1d | 2025-01-28 | 2025-01-28 | 110FF |  |
| 112 | 1.3.3.3 | **5.3.3. Implement Responsive Design** | 2d | 2025-01-29 | 2025-01-30 | 109 | Jack Chan |
| 113 | 1.3.3.3.1 | 5.3.3.1. Ensure Compatibility Across Devices and Screen Sizes | 2d | 2025-01-29 | 2025-01-30 |  |  |
| 114 | 1.3.3.3.2 | 5.3.3.2. Test Responsiveness with Various Viewports | 1d | 2025-01-30 | 2025-01-30 | 113FF |  |
| 115 | 1.3.4 | **5.4. Back-End Development** | 3d | 2025-01-31 | 2025-02-04 |  |  |
| 116 | 1.3.4.1 | **5.4.1. Set Up Server Environment** | 1d | 2025-01-31 | 2025-01-31 | 112 | Jack Chan |
| 117 | 1.3.4.1.1 | 5.4.1.1. Configure Server Settings for Deployment | 1d | 2025-01-31 | 2025-01-31 |  |  |
| 118 | 1.3.4.2 | **5.4.2. Develop APIs and Services** | 1d | 2025-02-03 | 2025-02-03 | 116 | Jack Chan |
| 119 | 1.3.4.2.1 | 5.4.2.1. Define API Endpoints for Mobile Interaction | 1d | 2025-02-03 | 2025-02-03 |  |  |
| 120 | 1.3.4.2.2 | 5.4.2.2. Implement Business Logic in Services | 1d | 2025-02-03 | 2025-02-03 | 119SS |  |
| 121 | 1.3.4.3 | **5.4.3. Integrate Database Systems** | 1d | 2025-02-04 | 2025-02-04 | 118 | Jack Chan |
| 122 | 1.3.4.3.1 | 5.4.3.1. Set Up Database Connections and Queries | 1d | 2025-02-04 | 2025-02-04 |  |  |
| 123 | 1.3.5 | **5.5. Integration with LLM** | 3d | 2025-02-05 | 2025-02-07 |  |  |
| 124 | 1.3.5.1 | **5.5.1. Define Integration Points** | 1d | 2025-02-05 | 2025-02-05 | 121 | Jack Chan |
| 125 | 1.3.5.1.1 | 5.5.1.1. Document Data Flow Between App and LLM | 1d | 2025-02-05 | 2025-02-05 |  |  |
| 126 | 1.3.5.2 | **5.5.2. Implement REST API to LLM** | 2d | 2025-02-06 | 2025-02-07 | 185 | Jack Chan |
| 127 | 1.3.5.2.1 | 5.5.2.1. Code API Calls to LLM | 2d | 2025-02-06 | 2025-02-07 |  |  |
| 128 | 1.3.5.2.2 | 5.5.2.2. Handle Responses and Errors from LLM | 1d | 2025-02-07 | 2025-02-07 | 127FF |  |
| 129 | 1.3.6 | Milestone: System Integration | 0d | 2025-02-07 | 2025-02-07 | 123 |  |

| ID | WBS | Task | Duration | Start | Finish | Predecessors | Resources |
| --- | --- | --- | --- | --- | --- | --- | --- |
| 130 | 1.3.7 | **5.6. Security Implementation** | 2d | 2025-02-10 | 2025-02-11 |  |  |
| 131 | 1.3.7.1 | **5.6.1. Implement User Authentication** | 1d | 2025-02-10 | 2025-02-10 | 126 | Jack Chan |
| 132 | 1.3.7.1.1 | 5.6.1.1. Choose Authentication Method | 1d | 2025-02-10 | 2025-02-10 |  |  |
| 133 | 1.3.7.1.2 | 5.6.1.2. Integrate Authentication in App Flow | 1d | 2025-02-10 | 2025-02-10 | 132SS |  |
| 134 | 1.3.7.2 | **5.6.2. Conduct Security Testing** | 1d | 2025-02-11 | 2025-02-11 | 131 | Jack Chan |
| 135 | 1.3.7.2.1 | 5.6.2.1. Perform Vulnerability Assessments | 1d | 2025-02-11 | 2025-02-11 |  |  |
| 136 | 1.3.7.2.2 | 5.6.2.2. Test for Common Security Issues | 1d | 2025-02-11 | 2025-02-11 | 135SS |  |
| 137 | 1.3.8 | **5.7. Testing and Quality Assurance** | 13d | 2025-02-12 | 2025-02-28 |  |  |
| 138 | 1.3.8.1 | **5.7.1. Develop Test Plans and Cases** | 2d | 2025-02-12 | 2025-02-13 | 134 | Jack Chan |
| 139 | 1.3.8.1.1 | 5.7.1.1. Create Comprehensive Test Plan Document | 1d | 2025-02-12 | 2025-02-12 |  |  |
| 140 | 1.3.8.1.2 | 5.7.1.2. Write Test Cases for All Features | 1d | 2025-02-13 | 2025-02-13 | 139 |  |
| 141 | 1.3.8.2 | **5.7.2. Perform Functional Testing** | 1d | 2025-02-14 | 2025-02-14 | 138 | Jack Chan |
| 142 | 1.3.8.2.1 | 5.7.2.1. Validate Functionality Against Requirements | 1d | 2025-02-14 | 2025-02-14 |  |  |
| 143 | 1.3.8.2.2 | 5.7.2.2. Document and Report Testing Results | 1d | 2025-02-14 | 2025-02-14 | 142FF |  |
| 144 | 1.3.8.3 | **5.7.3. Conduct Performance Testing** | 2d | 2025-02-17 | 2025-02-18 | 141 | Jack Chan |
| 145 | 1.3.8.3.1 | 5.7.3.1. Measure App Response Times and Load Handling | 1d | 2025-02-17 | 2025-02-17 |  |  |
| 146 | 1.3.8.3.2 | 5.7.3.2. Analyse Results and Optimize Performance | 1d | 2025-02-18 | 2025-02-18 | 145 |  |
| 147 | 1.3.8.4 | **5.7.4. Maximum Load Traffic Testing** | 1d | 2025-02-19 | 2025-02-19 | 144 | Jack Chan |
| 148 | 1.3.8.4.1 | 5.7.4.1. Simulate High-Volume User Traffic | 1d | 2025-02-19 | 2025-02-19 |  |  |
| 149 | 1.3.8.4.2 | 5.7.4.2. Identify Bottlenecks and Limitations | 1d | 2025-02-19 | 2025-02-19 | 148SS |  |
| 150 | 1.3.8.5 | **5.7.5. User Acceptance Testing** | 5d | 2025-02-20 | 2025-02-26 | 147 | Jack Chan |
| 151 | 1.3.8.5.1 | 5.7.5.1. Gather Feedback from End Users | 5d | 2025-02-20 | 2025-02-26 |  |  |
| 152 | 1.3.8.5.2 | 5.7.5.2. Make Adjustments Based on Feedback | 3d | 2025-02-24 | 2025-02-26 | 151FF |  |
| 153 | 1.3.8.6 | **5.7.6. Fix Bugs and Issues** | 2d | 2025-02-27 | 2025-02-28 | 150 | Jack Chan |
| 154 | 1.3.8.6.1 | 5.7.6.1. Prioritise Bugs and Assign to Developers | 1d | 2025-02-27 | 2025-02-27 |  |  |
| 155 | 1.3.8.6.2 | 5.7.6.2. Verify Bug Fixes through Regression Testing | 2d | 2025-02-27 | 2025-02-28 | 154SS |  |

| ID | WBS | Task | Duration | Start | Finish | Predecessors | Resources |
| --- | --- | --- | --- | --- | --- | --- | --- |
| 156 | 1.3.9 | **5.8. Deployment Preparation** | 3d | 2025-03-03 | 2025-03-05 |  |  |
| 157 | 1.3.9.1 | **5.8.1. Prepare Deployment Packages** | 1d | 2025-03-03 | 2025-03-03 | 153 | Jack Chan |
| 158 | 1.3.9.1.1 | 5.8.1.1. Bundle Application Assets for Release | 1d | 2025-03-03 | 2025-03-03 |  |  |
| 159 | 1.3.9.1.2 | 5.8.1.2. Create Release Notes for Stakeholders | 1d | 2025-03-03 | 2025-03-03 | 158SS |  |
| 160 | 1.3.9.2 | **5.8.2. Set Up Deployment Pipelines** | 1d | 2025-03-04 | 2025-03-04 | 157 | Jack Chan |
| 161 | 1.3.9.2.1 | 5.8.2.1. Configure CI/CD for Automated Deployment | 1d | 2025-03-04 | 2025-03-04 |  |  |
| 162 | 1.3.9.2.2 | 5.8.2.2. Test Deployment Pipeline for Functionality | 1d | 2025-03-04 | 2025-03-04 | 161SS |  |
| 163 | 1.3.9.3 | **5.8.3. Configure App Store Listings** | 1d | 2025-03-05 | 2025-03-05 | 160 | Jack Chan |
| 164 | 1.3.9.3.1 | 5.8.3.1. Prepare Marketing Material and Screenshots | 1d | 2025-03-05 | 2025-03-05 |  |  |
| 165 | 1.3.9.3.2 | 5.8.3.2. Submit App to App Stores for Review | 1d | 2025-03-05 | 2025-03-05 | 164FF |  |
| 166 | 1.4 | **6. Large Language Model (LLM) Development** | 45d | 2025-01-02 | 2025-03-05 |  |  |
| 167 | 1.4.1 | **6.1. Data Collection** | 8d | 2025-01-02 | 2025-01-13 |  |  |
| 168 | 1.4.1.1 | **6.1.1. Identify Data Sources** | 5d | 2025-01-02 | 2025-01-08 | 77 | Billy Tse |
| 169 | 1.4.1.1.1 | 6.1.1.1. Research Reputable Data Providers | 2d | 2025-01-02 | 2025-01-03 |  |  |
| 170 | 1.4.1.1.2 | 6.1.1.2. Consult with Psychologists for Data Recommendations | 5d | 2025-01-02 | 2025-01-08 | 169SS |  |
| 171 | 1.4.1.2 | **6.1.2. Acquire Psychological Therapy Datasets** | 2d | 2025-01-09 | 2025-01-10 | 168 | Billy Tse; Datasets |
| 172 | 1.4.1.2.1 | 6.1.2.1. Evaluate Available Datasets | 1d | 2025-01-09 | 2025-01-09 |  |  |
| 173 | 1.4.1.2.2 | 6.1.2.2. Purchase or Download Additional Datasets as Needed | 2d | 2025-01-09 | 2025-01-10 | 172FF |  |
| 174 | 1.4.1.3 | **6.1.3. Obtain Necessary Permissions and Licences** | 1d | 2025-01-13 | 2025-01-13 | 171 | Billy Tse |
| 175 | 1.4.1.3.1 | 6.1.3.1. Review Licensing Agreements for Datasets | 1d | 2025-01-13 | 2025-01-13 |  |  |
| 176 | 1.4.1.3.2 | 6.1.3.2. Ensure Compliance with Data Usage Policies | 1d | 2025-01-13 | 2025-01-13 | 175SS |  |
| 177 | 1.4.2 | **6.2. Data Preprocessing** | 5d | 2025-01-14 | 2025-01-20 |  |  |
| 178 | 1.4.2.1 | **6.2.1. Data Cleansing** | 2d | 2025-01-14 | 2025-01-15 | 174 | Billy Tse |
| 179 | 1.4.2.1.1 | 6.2.1.1. Remove Duplicates and Inconsistent Entries | 2d | 2025-01-14 | 2025-01-15 |  |  |
| 180 | 1.4.2.1.2 | 6.2.1.2. Handle Missing Values Appropriately | 2d | 2025-01-14 | 2025-01-15 | 179SS |  |

| ID | WBS | Task | Duration | Start | Finish | Predecessors | Resources |
| --- | --- | --- | --- | --- | --- | --- | --- |
| 181 | 1.4.2.2 | **6.2.2. Extract, Transform, and Load** | 3d | 2025-01-16 | 2025-01-20 | 178 | Billy Tse |
| 182 | 1.4.2.2.1 | 6.2.2.1. Extract Relevant Data Fields from Datasets | 3d | 2025-01-16 | 2025-01-20 |  |  |
| 183 | 1.4.2.2.2 | 6.2.2.2. Transform Data into Required Formats | 2d | 2025-01-17 | 2025-01-20 | 182FF |  |
| 184 | 1.4.2.2.3 | 6.2.2.3. Load Data into Training Environment | 1d | 2025-01-20 | 2025-01-20 | 182FF |  |
| 185 | 1.4.3 | **6.3. Model Fine-Tuning** | 12d | 2025-01-21 | 2025-02-05 |  |  |
| 186 | 1.4.3.1 | **6.3.1. Configure Training Environment** | 1d | 2025-01-21 | 2025-01-21 | 181 | Billy Tse; GPU VM Instance |
| 187 | 1.4.3.1.1 | 6.3.1.2. Install Necessary Software Libraries and Frameworks | 1d | 2025-01-21 | 2025-01-21 |  |  |
| 188 | 1.4.3.2 | **6.3.2. Fine-Tune LLM** | 8d | 2025-01-22 | 2025-01-31 | 186 | Billy Tse |
| 189 | 1.4.3.2.1 | 6.3.2.1. Select Appropriate Pre-trained Model | 2d | 2025-01-22 | 2025-01-23 |  |  |
| 190 | 1.4.3.2.2 | 6.3.2.2. Fine-Tune Model on Preprocessed Data | 8d | 2025-01-22 | 2025-01-31 | 189SS |  |
| 191 | 1.4.3.3 | **6.3.3. Evaluate Model Performance** | 3d | 2025-02-03 | 2025-02-05 | 188 | Billy Tse |
| 192 | 1.4.3.3.1 | 6.3.3.1. Define Key Performance Metrics | 1d | 2025-02-03 | 2025-02-03 |  |  |
| 193 | 1.4.3.3.2 | 6.3.3.2. Run Evaluation Tests on Validation Set | 3d | 2025-02-03 | 2025-02-05 | 192SS |  |
| 194 | 1.4.4 | Milestone: Fine-Tune LLM Model | 0d | 2025-02-05 | 2025-02-05 | 185 |  |
| 195 | 1.4.5 | **6.4. Ethical and Cultural Alignment** | 6d | 2025-02-06 | 2025-02-13 |  |  |
| 196 | 1.4.5.1 | **6.4.1. Implement Ethical Guidelines** | 1d | 2025-02-06 | 2025-02-06 | 191 | Billy Tse |
| 197 | 1.4.5.1.1 | 6.4.1.1. Establish Ethical Standards for Model Usage | 1d | 2025-02-06 | 2025-02-06 |  |  |
| 198 | 1.4.5.1.2 | 6.4.1.2. Create Documentation for Ethical Considerations | 1d | 2025-02-06 | 2025-02-06 | 197FF |  |
| 199 | 1.4.5.2 | **6.4.2. Ensure Cultural Sensitivity** | 3d | 2025-02-07 | 2025-02-11 | 196 | Billy Tse; Psychologist/ Psychotherapist Consultancy |
| 200 | 1.4.5.2.1 | 6.4.2.1. Consult Psychologists for Guidance | 3d | 2025-02-07 | 2025-02-11 |  |  |
| 201 | 1.4.5.2.2 | 6.4.2.2. Incorporate Feedback into Model Training | 3d | 2025-02-07 | 2025-02-11 | 200FF |  |
| 202 | 1.4.5.3 | **6.4.3. Review for Bias and Appropriateness** | 2d | 2025-02-12 | 2025-02-13 | 199 | Billy Tse |
| 203 | 1.4.5.3.1 | 6.4.3.1. Conduct Bias Analysis on Model Outputs | 1d | 2025-02-12 | 2025-02-12 |  |  |
| 204 | 1.4.5.3.2 | 6.4.3.2. Adjust Training Data to Mitigate Biases | 1d | 2025-02-13 | 2025-02-13 | 203 |  |

| ID | WBS | Task | Duration | Start | Finish | Predecessors | Resources |
| --- | --- | --- | --- | --- | --- | --- | --- |
| 205 | 1.4.6 | **6.5. Testing and Validation** | 12d | 2025-02-14 | 2025-03-03 |  |  |
| 206 | 1.4.6.1 | **6.5.1. Conduct Model Response Evaluation** | 1d | 2025-02-14 | 2025-02-14 | 202 | Billy Tse |
| 207 | 1.4.6.1.1 | 6.5.1.1. Generate Sample Responses from the Model | 1d | 2025-02-14 | 2025-02-14 |  |  |
| 208 | 1.4.6.1.2 | 6.5.1.2. Assess Response Quality Based on Pre-defined Criteria | 1d | 2025-02-14 | 2025-02-14 | 207SS |  |
| 209 | 1.4.6.2 | **6.5.2. Validate Responses with Psychologists** | 10d | 2025-02-17 | 2025-02-28 | 206 | Billy Tse |
| 210 | 1.4.6.2.1 | 6.5.2.1. Gather Feedback from Psychologists | 10d | 2025-02-17 | 2025-02-28 |  |  |
| 211 | 1.4.6.2.2 | 6.5.2.2. Adjust Model Based on Psychologists Recommendations | 5d | 2025-02-24 | 2025-02-28 | 210FF |  |
| 212 | 1.4.6.3 | **6.5.3. Security Testing** | 1d | 2025-03-03 | 2025-03-03 | 209 | Billy Tse |
| 213 | 1.4.6.3.1 | 6.5.3.1. Test for Vulnerabilities in Model Interaction | 1d | 2025-03-03 | 2025-03-03 |  |  |
| 214 | 1.4.6.3.2 | 6.5.3.2. Ensure Compliance with Security Standards | 1d | 2025-03-03 | 2025-03-03 | 213SS |  |
| 215 | 1.4.7 | **6.6. Deployment Readiness** | 2d | 2025-03-04 | 2025-03-05 |  |  |
| 216 | 1.4.7.1 | **6.6.1. Set Up Hosting Environment** | 1d | 2025-03-04 | 2025-03-04 | 212 | Billy Tse |
| 217 | 1.4.7.1.1 | 6.6.1.1. Configure Servers for Model Hosting | 1d | 2025-03-04 | 2025-03-04 |  |  |
| 218 | 1.4.7.2 | **6.6.2. Optimise Model for Production** | 1d | 2025-03-05 | 2025-03-05 | 216 | Billy Tse |
| 219 | 1.4.7.2.1 | 6.6.2.1. Reduce Model Size and Complexity for Efficiency | 1d | 2025-03-05 | 2025-03-05 |  |  |
| 220 | 1.4.7.2.2 | 6.6.2.2. Implement Caching and Load Balancing Strategies | 1d | 2025-03-05 | 2025-03-05 | 219FF |  |
| 221 | 1.5 | **7. User Testing and Feedback Integration** | 25d | 2025-02-13 | 2025-03-19 |  |  |
| 222 | 1.5.1 | **7.1. Pilot Testing Plan** | 1d | 2025-03-06 | 2025-03-06 |  |  |
| 223 | 1.5.1.1 | **7.1.1. Define Testing Objectives** | 1d | 2025-03-06 | 2025-03-06 | 239 | Billy Tse |
| 224 | 1.5.1.1.1 | 7.1.1.1. Establish Goals for User Testing | 1d | 2025-03-06 | 2025-03-06 |  |  |
| 225 | 1.5.1.1.2 | 7.1.1.2. Identify Key Metrics for Success | 1d | 2025-03-06 | 2025-03-06 | 224SS |  |
| 226 | 1.5.1.2 | **7.1.2. Develop Testing Protocols** | 1d | 2025-03-06 | 2025-03-06 | 239 | Jack Chan |
| 227 | 1.5.1.2.1 | 7.1.2.1. Create Step-by-Step Testing Procedures | 1d | 2025-03-06 | 2025-03-06 |  |  |
| 228 | 1.5.1.2.2 | 7.1.2.2. Define Roles and Responsibilities for Test Facilitators | 1d | 2025-03-06 | 2025-03-06 | 227SS |  |

| ID | WBS | Task | Duration | Start | Finish | Predecessors | Resources |
| --- | --- | --- | --- | --- | --- | --- | --- |
| 229 | 1.5.1.3 | **7.1.3. Prepare Testing Materials** | 1d | 2025-03-06 | 2025-03-06 | 239 | Kelvin Luk |
| 230 | 1.5.1.3.1 | 7.1.3.1. Create User Scenarios and Tasks for Testing | 1d | 2025-03-06 | 2025-03-06 |  |  |
| 231 | 1.5.1.3.2 | 7.1.3.2. Develop Surveys and Questionnaires for Feedback Collection | 1d | 2025-03-06 | 2025-03-06 | 230SS |  |
| 232 | 1.5.2 | **7.2. Recruit Test Users** | 15d | 2025-02-13 | 2025-03-05 |  |  |
| 233 | 1.5.2.1 | **7.2.1. Identify Target User Groups** | 2d | 2025-02-13 | 2025-02-14 | 311 | Kelvin Luk |
| 234 | 1.5.2.1.1 | 7.2.1.1. Define Criteria for Selecting Participants | 2d | 2025-02-13 | 2025-02-14 |  |  |
| 235 | 1.5.2.1.2 | 7.2.1.2. Ensure Diversity in User Representation | 1d | 2025-02-14 | 2025-02-14 | 234FF |  |
| 236 | 1.5.2.2 | **7.2.2. Obtain Consent and Non-Disclosure Agreements** | 2d | 2025-02-17 | 2025-02-18 | 233 | Kelvin Luk |
| 237 | 1.5.2.2.1 | 7.2.2.1. Draft Consent Forms for Participants | 2d | 2025-02-17 | 2025-02-18 |  |  |
| 238 | 1.5.2.2.2 | 7.2.2.2. Ensure Compliance with Ethical Standards | 1d | 2025-02-18 | 2025-02-18 | 237FF |  |
| 239 | 1.5.2.3 | **7.2.3. Schedule Testing Sessions** | 11d | 2025-02-19 | 2025-03-05 | 236 | Kelvin Luk; Testers |
| 240 | 1.5.2.3.1 | 7.2.3.1. Coordinate Availability of Participants | 10d | 2025-02-19 | 2025-03-04 |  |  |
| 241 | 1.5.2.3.2 | 7.2.3.2. Set Up a Testing Calendar | 1d | 2025-03-05 | 2025-03-05 | 240 |  |
| 242 | 1.5.3 | **7.3. Conduct User Testing** | 2d | 2025-03-07 | 2025-03-10 |  |  |
| 243 | 1.5.3.1 | **7.3.1. Facilitate Testing Sessions** | 2d | 2025-03-07 | 2025-03-10 | 229 | Kelvin Luk |
| 244 | 1.5.3.1.1 | 7.3.1.1. Provide Instructions to Participants | 2d | 2025-03-07 | 2025-03-10 |  |  |
| 245 | 1.5.3.1.2 | 7.3.1.2. Ensure a Comfortable Testing Environment | 2d | 2025-03-07 | 2025-03-10 | 244FF |  |
| 246 | 1.5.3.2 | **7.3.2. Collect Usage Data and Feedback** | 2d | 2025-03-07 | 2025-03-10 | 229 | Billy Tse |
| 247 | 1.5.3.2.1 | 7.3.2.1. Data Tracking (i.e., screen recording, analytics) | 2d | 2025-03-07 | 2025-03-10 |  |  |
| 248 | 1.5.3.2.2 | 7.3.2.2. Distribute Feedback Surveys Immediately After Testing | 1d | 2025-03-07 | 2025-03-07 | 247SS |  |
| 249 | 1.5.3.3 | **7.3.3. Observe User Interactions** | 2d | 2025-03-07 | 2025-03-10 | 229 | Jack Chan |
| 250 | 1.5.3.3.1 | 7.3.3.1. Take Notes on User Behavior and Challenges | 2d | 2025-03-07 | 2025-03-10 |  |  |
| 251 | 1.5.3.3.2 | 7.3.3.2. Record Observations for Further Analysis | 2d | 2025-03-07 | 2025-03-10 | 250SS |  |
| 252 | 1.5.4 | Milestone: User Acceptance Test | 0d | 2025-03-10 | 2025-03-10 | 242 |  |

| ID | WBS | Task | Duration | Start | Finish | Predecessors | Resources |
| --- | --- | --- | --- | --- | --- | --- | --- |
| 253 | 1.5.5 | **7.4. Feedback Analysis** | 2d | 2025-03-11 | 2025-03-12 |  |  |
| 254 | 1.5.5.1 | **7.4.1. Compile Feedback Reports** | 2d | 2025-03-11 | 2025-03-12 | 249 | Kelvin Luk |
| 255 | 1.5.5.1.1 | 7.4.1.1. Aggregate Data from Surveys and Observations | 1d | 2025-03-11 | 2025-03-11 |  |  |
| 256 | 1.5.5.1.2 | 7.4.1.2. Create a Summary Report of Findings | 1d | 2025-03-12 | 2025-03-12 | 255 |  |
| 257 | 1.5.5.2 | **7.4.2. Identify Common Issues** | 2d | 2025-03-11 | 2025-03-12 | 249 | Jack Chan |
| 258 | 1.5.5.2.1 | 7.4.2.1. Analyse Feedback for Recurrent Themes | 2d | 2025-03-11 | 2025-03-12 |  |  |
| 259 | 1.5.5.2.2 | 7.4.2.2. Categorise Issues by Severity and Frequency | 2d | 2025-03-11 | 2025-03-12 | 258SS |  |
| 260 | 1.5.5.3 | **7.4.3. Prioritise Areas for Improvement** | 2d | 2025-03-11 | 2025-03-12 | 249 | Billy Tse |
| 261 | 1.5.5.3.1 | 7.4.3.1. Develop a Prioritisation Matrix for Action Items | 1d | 2025-03-11 | 2025-03-11 |  |  |
| 262 | 1.5.5.3.2 | 7.4.3.2. Engage Stakeholders in Review and Agreement on Priorities | 1d | 2025-03-12 | 2025-03-12 | 261 |  |
| 263 | 1.5.6 | **7.5. Implement Improvements** | 5d | 2025-03-13 | 2025-03-19 |  |  |
| 264 | 1.5.6.1 | **7.5.1. Update Application Features** | 5d | 2025-03-13 | 2025-03-19 | 260 | Jack Chan |
| 265 | 1.5.6.1.1 | 7.5.1.1. Make Necessary Changes Based on Feedback | 5d | 2025-03-13 | 2025-03-19 |  |  |
| 266 | 1.5.6.1.2 | 7.5.1.2. Document Changes Made to Features | 1d | 2025-03-19 | 2025-03-19 | 265FF |  |
| 267 | 1.5.6.2 | **7.5.2. Refine LLM Prompt Design** | 5d | 2025-03-13 | 2025-03-19 | 260 | Billy Tse |
| 268 | 1.5.6.2.1 | 7.5.2.1. Adjust Prompts Based on User Interaction Insights | 5d | 2025-03-13 | 2025-03-19 |  |  |
| 269 | 1.5.6.2.2 | 7.5.2.2. Test New Prompt Designs for Clarity and Effectiveness | 3d | 2025-03-17 | 2025-03-19 | 268FF |  |
| 270 | 1.5.6.3 | **7.5.3. Test Adjustments for Effectiveness** | 5d | 2025-03-13 | 2025-03-19 | 257 | Kelvin Luk |
| 271 | 1.5.6.3.1 | 7.5.3.1. Conduct Follow-Up Testing Sessions | 2d | 2025-03-13 | 2025-03-14 |  |  |
| 272 | 1.5.6.3.2 | 7.5.3.2. Measure Improvements Against Initial Metrics | 3d | 2025-03-17 | 2025-03-19 | 271 |  |
| 273 | 1.6 | **8. Regulatory Compliance and Legal** | 30d | 2025-01-02 | 2025-02-12 |  |  |
| 274 | 1.6.1 | **8.1. Data Privacy Compliance** | 14d | 2025-01-02 | 2025-01-21 |  |  |
| 275 | 1.6.1.1 | **8.1.1. Review Data Protection Regulations** | 5d | 2025-01-02 | 2025-01-08 | 71 | Kelvin Luk; Cybersecurity Consultancy |
| 276 | 1.6.1.1.1 | 8.1.1.1. Identify Applicable Regulations | 3d | 2025-01-02 | 2025-01-06 |  |  |
| 277 | 1.6.1.1.2 | 8.1.1.2. Analyse Requirements for Data Handling and User Rights | 2d | 2025-01-07 | 2025-01-08 | 276 |  |

| ID | WBS | Task | Duration | Start | Finish | Predecessors | Resources |
| --- | --- | --- | --- | --- | --- | --- | --- |
| 278 | 1.6.1.2 | **8.1.2. Develop Privacy Policy and Terms** | 5d | 2025-01-09 | 2025-01-15 | 275 | Kelvin Luk |
| 279 | 1.6.1.2.1 | 8.1.2.1. Draft a Comprehensive Privacy Policy | 3d | 2025-01-09 | 2025-01-13 |  |  |
| 280 | 1.6.1.2.2 | 8.1.2.2. Create Terms of Service that Comply with Regulations | 2d | 2025-01-14 | 2025-01-15 | 279 |  |
| 281 | 1.6.1.3 | **8.1.3. Implement User Consent Mechanisms** | 4d | 2025-01-16 | 2025-01-21 | 278 | Kelvin Luk |
| 282 | 1.6.1.3.1 | 8.1.3.1. Design User Interface for Consent Collection | 4d | 2025-01-16 | 2025-01-21 |  |  |
| 283 | 1.6.1.3.2 | 8.1.3.2. Ensure Mechanisms for Opt-in/Opt-out Options | 1d | 2025-01-21 | 2025-01-21 | 282FF |  |
| 284 | 1.6.2 | **8.2. Mental Health Service Regulations** | 8d | 2025-01-22 | 2025-01-31 |  |  |
| 285 | 1.6.2.1 | **8.2.1. Understand Relevant Health Laws** | 2d | 2025-01-22 | 2025-01-23 | 281 | Kelvin Luk |
| 286 | 1.6.2.1.1 | 8.2.1.1. Research Regulations Specific to Mental Health Services | 1d | 2025-01-22 | 2025-01-22 |  |  |
| 287 | 1.6.2.1.2 | 8.2.1.2. Identify Compliance Requirements for Telehealth | 1d | 2025-01-23 | 2025-01-23 | 286 |  |
| 288 | 1.6.2.2 | **8.2.2. Consult with Legal Experts** | 3d | 2025-01-24 | 2025-01-28 | 285 | Kelvin Luk; Lawyers Consultancy |
| 289 | 1.6.2.2.1 | 8.2.2.1. Schedule Consultations with Healthcare Attorneys | 3d | 2025-01-24 | 2025-01-28 |  |  |
| 290 | 1.6.2.2.2 | 8.2.2.2. Document Legal Recommendations and Insights | 1d | 2025-01-28 | 2025-01-28 | 289FF |  |
| 291 | 1.6.2.3 | **8.2.3. Ensure Service Compliance** | 3d | 2025-01-29 | 2025-01-31 | 288 | Kelvin Luk |
| 292 | 1.6.2.3.1 | 8.2.3.1. Conduct Compliance Audits Against Regulations | 1d | 2025-01-29 | 2025-01-29 |  |  |
| 293 | 1.6.2.3.2 | 8.2.3.2. Implement Changes Based on Compliance Findings | 2d | 2025-01-30 | 2025-01-31 | 292 |  |
| 294 | 1.6.3 | **8.3. Intellectual Property** | 3d | 2025-02-03 | 2025-02-05 |  |  |
| 295 | 1.6.3.1 | **8.3.1. Secure Necessary Licenses** | 1d | 2025-02-03 | 2025-02-03 | 291 | Kelvin Luk |
| 296 | 1.6.3.1.1 | 8.3.1.1. Identify Required Licenses for Software and Content | 1d | 2025-02-03 | 2025-02-03 |  |  |
| 297 | 1.6.3.1.2 | 8.3.1.2. Complete Applications for Licenses | 1d | 2025-02-03 | 2025-02-03 | 296SS |  |
| 298 | 1.6.3.2 | **8.3.2. Protect Proprietary Technology** | 1d | 2025-02-04 | 2025-02-04 | 295 | Kelvin Luk |
| 299 | 1.6.3.2.1 | 8.3.2.1. File for Patents if Applicable | 1d | 2025-02-04 | 2025-02-04 |  |  |
| 300 | 1.6.3.2.2 | 8.3.2.2. Implement Non-Disclosure Agreements with Workers | 1d | 2025-02-04 | 2025-02-04 | 299SS |  |
| 301 | 1.6.3.3 | **8.3.3. Address Copyright Concerns** | 1d | 2025-02-05 | 2025-02-05 | 298 | Kelvin Luk |
| 302 | 1.6.3.3.1 | 8.3.3.1. Ensure Copyright Compliance for All Materials Used | 1d | 2025-02-05 | 2025-02-05 |  |  |
| 303 | 1.6.3.3.2 | 8.3.3.2. Monitor for Potential Infringements | 1d | 2025-02-05 | 2025-02-05 | 302SS |  |

| ID | WBS | Task | Duration | Start | Finish | Predecessors | Resources |
| --- | --- | --- | --- | --- | --- | --- | --- |
| 304 | 1.6.4 | **8.4. Legal Documentation** | 5d | 2025-02-06 | 2025-02-12 |  |  |
| 305 | 1.6.4.1 | **8.4.1. Draft User Agreements** | 2d | 2025-02-06 | 2025-02-07 | 301 | Kelvin Luk |
| 306 | 1.6.4.1.1 | 8.4.1.1. Create User Agreements Tailored to Service Offerings | 2d | 2025-02-06 | 2025-02-07 |  |  |
| 307 | 1.6.4.1.2 | 8.4.1.2. Include Clauses for Liability and Dispute Resolution | 1d | 2025-02-07 | 2025-02-07 | 306FF |  |
| 308 | 1.6.4.2 | **8.4.2. Prepare Disclaimers** | 2d | 2025-02-10 | 2025-02-11 | 305 | Kelvin Luk |
| 309 | 1.6.4.2.1 | 8.4.2.1. Draft Disclaimers for App Usage and Content | 2d | 2025-02-10 | 2025-02-11 |  |  |
| 310 | 1.6.4.2.2 | 8.4.2.2. Ensure Clarity and Legal Sufficiency of Disclaimers | 1d | 2025-02-11 | 2025-02-11 | 309FF |  |
| 311 | 1.6.4.3 | **8.4.3. Review with Legal Counsel** | 1d | 2025-02-12 | 2025-02-12 | 308 | Kelvin Luk |
| 312 | 1.6.4.3.1 | 8.4.3.1. Review Sessions with Legal Counsel | 1d | 2025-02-12 | 2025-02-12 |  |  |
| 313 | 1.6.4.3.2 | 8.4.3.2. Incorporate Legal Feedback into Final Documentation | 1d | 2025-02-12 | 2025-02-12 | 312FF |  |
| 314 | 1.6.5 | Milestone: Product Documentation | 0d | 2025-02-12 | 2025-02-12 | 304 |  |
| 315 | 1.7 | **9. Deployment and Launch** | 9d | 2025-03-20 | 2025-04-01 |  |  |
| 316 | 1.7.1 | **9.1. Final Preparations** | 5d | 2025-03-20 | 2025-03-26 |  |  |
| 317 | 1.7.1.1 | **9.1.1. Perform Final Testing** | 5d | 2025-03-20 | 2025-03-26 | 270 | Billy Tse |
| 318 | 1.7.1.1.1 | 9.1.1.1. Conduct End-to-End Testing of the Application | 5d | 2025-03-20 | 2025-03-26 |  |  |
| 319 | 1.7.1.1.2 | 9.1.1.2. Execute Regression Testing to Ensure Stability | 5d | 2025-03-20 | 2025-03-26 | 318FF |  |
| 320 | 1.7.1.2 | **9.1.2. Ensure All Features are Functional** | 5d | 2025-03-20 | 2025-03-26 | 270 | Jack Chan |
| 321 | 1.7.1.2.1 | 9.1.2.1. Review Feature Lists Against Requirements | 1d | 2025-03-20 | 2025-03-20 |  |  |
| 322 | 1.7.1.2.2 | 9.1.2.2. Conduct User Acceptance Testing | 4d | 2025-03-21 | 2025-03-26 | 321 |  |
| 323 | 1.7.1.3 | **9.1.3. Prepare Marketing Materials** | 5d | 2025-03-20 | 2025-03-26 | 270 | Kelvin Luk |
| 324 | 1.7.1.3.1 | 9.1.3.1. Create Promotional Content (i.e., videos, graphics) | 2d | 2025-03-20 | 2025-03-21 |  |  |
| 325 | 1.7.1.3.2 | 9.1.3.2. Develop Press Kits for Media Outreach | 3d | 2025-03-24 | 2025-03-26 | 324 |  |
| 326 | 1.7.2 | **9.2. App Store Submission** | 3d | 2025-03-27 | 2025-03-31 |  |  |
| 327 | 1.7.2.1 | **9.2.1. Prepare App Store Assets** | 1d | 2025-03-27 | 2025-03-27 | 320 | Jack Chan; Application Store Fee |
| 328 | 1.7.2.1.1 | 9.2.1.1. Create App Icons and Screenshots | 1d | 2025-03-27 | 2025-03-27 |  |  |
| 329 | 1.7.2.1.2 | 9.2.1.2. Write App Descriptions and Keywords for SEO | 1d | 2025-03-27 | 2025-03-27 | 328SS |  |

| ID | WBS | Task | Duration | Start | Finish | Predecessors | Resources |
| --- | --- | --- | --- | --- | --- | --- | --- |
| 330 | 1.7.2.2 | **9.2.2. Submit to App Stores (iOS and Android)** | 1d | 2025-03-28 | 2025-03-28 | 327 | Jack Chan |
| 331 | 1.7.2.2.1 | 9.2.2.1. Complete Submission Forms for Each Platform | 1d | 2025-03-28 | 2025-03-28 |  |  |
| 332 | 1.7.2.2.2 | 9.2.2.2. Ensure Compliance with App Store Guidelines | 1d | 2025-03-28 | 2025-03-28 | 331FF |  |
| 333 | 1.7.2.3 | **9.2.3. Address Any Submission Feedback** | 1d | 2025-03-31 | 2025-03-31 | 330 | Jack Chan |
| 334 | 1.7.2.3.1 | 9.2.3.1. Monitor Submission Status and Respond to Queries | 1d | 2025-03-31 | 2025-03-31 |  |  |
| 335 | 1.7.2.3.2 | 9.2.3.2. Make Necessary Adjustments Based on Feedback | 1d | 2025-03-31 | 2025-03-31 | 334SS |  |
| 336 | 1.7.3 | **9.3. Marketing and Outreach** | 3d | 2025-03-27 | 2025-03-31 |  |  |
| 337 | 1.7.3.1 | **9.3.1. Launch Marketing Campaigns** | 2d | 2025-03-27 | 2025-03-28 | 323 | Kelvin Luk; Marketing - Advertisement |
| 338 | 1.7.3.1.1 | 9.3.1.1. Develop a Comprehensive Marketing Strategy | 2d | 2025-03-27 | 2025-03-28 |  |  |
| 339 | 1.7.3.1.2 | 9.3.1.2. Schedule and Execute Marketing Activities | 2d | 2025-03-27 | 2025-03-28 | 338SS |  |
| 340 | 1.7.3.2 | **9.3.2. Engage with Media and Press** | 1d | 2025-03-31 | 2025-03-31 | 337 | Kelvin Luk |
| 341 | 1.7.3.2.1 | 9.3.2.1. Distribute Press Releases to Relevant Outlets | 1d | 2025-03-31 | 2025-03-31 |  |  |
| 342 | 1.7.3.2.2 | 9.3.2.2. Interviews with Key Media Representatives | 1d | 2025-03-31 | 2025-03-31 | 341SS |  |
| 343 | 1.7.3.3 | **9.3.3. Organise Launch Events** | 1d | 2025-03-27 | 2025-03-27 | 317 | Billy Tse |
| 344 | 1.7.3.3.1 | 9.3.3.1. Plan Virtual or In-Person Launch Event Logistics | 1d | 2025-03-27 | 2025-03-27 |  |  |
| 345 | 1.7.3.3.2 | 9.3.3.2. Invite HKJC Project Team and Media | 1d | 2025-03-27 | 2025-03-27 | 344SS |  |
| 346 | 1.7.3.4 | **9.3.4. Public Education Campaigns** | 1d | 2025-03-28 | 2025-03-28 | 343 | Billy Tse; Marketing - Webinar |
| 347 | 1.7.3.4.1 | 9.3.4.1. Create Educational Content Webinars | 1d | 2025-03-28 | 2025-03-28 |  |  |
| 348 | 1.7.3.4.2 | 9.3.4.2. Share Resources on Mental Health and App Benefits | 1d | 2025-03-28 | 2025-03-28 | 347SS |  |
| 349 | 1.7.3.5 | **9.3.5. Community Engagement** | 1d | 2025-03-31 | 2025-03-31 | 346 | Billy Tse |
| 350 | 1.7.3.5.1 | 9.3.5.1. Participate in Community Forums and Discussions | 1d | 2025-03-31 | 2025-03-31 |  |  |
| 351 | 1.7.3.5.2 | 9.3.5.2. Encourage User Feedback and Interaction | 1d | 2025-03-31 | 2025-03-31 | 350SS |  |
| 352 | 1.7.4 | **9.4. User Onboarding** | 1d | 2025-04-01 | 2025-04-01 |  |  |
| 353 | 1.7.4.1 | **9.4.1. Implement Onboarding Tutorials** | 1d | 2025-04-01 | 2025-04-01 | 340 | Kelvin Luk |
| 354 | 1.7.4.1.1 | 9.4.1.1. Design Interactive Tutorials for First-Time Users | 1d | 2025-04-01 | 2025-04-01 |  |  |
| 355 | 1.7.4.1.2 | 9.4.1.2. Create Help Guides and FAQ Sections | 1d | 2025-04-01 | 2025-04-01 | 354SS |  |

| ID | WBS | Task | Duration | Start | Finish | Predecessors | Resources |
| --- | --- | --- | --- | --- | --- | --- | --- |
| 356 | 1.7.4.2 | **9.4.2. Provide Support Resources** | 1d | 2025-04-01 | 2025-04-01 | 349 | Billy Tse |
| 357 | 1.7.4.2.1 | 9.4.2.1. Set Up Customer Support Channels (i.e., email, phone) | 1d | 2025-04-01 | 2025-04-01 |  |  |
| 358 | 1.7.4.2.2 | 9.4.2.2. Develop Knowledge Base for Common Issues | 1d | 2025-04-01 | 2025-04-01 | 357SS |  |
| 359 | 1.7.4.3 | **9.4.3. Gather Initial User Feedback** | 1d | 2025-04-01 | 2025-04-01 | 333 | Jack Chan |
| 360 | 1.7.4.3.1 | 9.4.3.1. Distribute Surveys Post-Onboarding | 1d | 2025-04-01 | 2025-04-01 |  |  |
| 361 | 1.7.4.3.2 | 9.4.3.2. Analyse Feedback for Continuous Improvement | 1d | 2025-04-01 | 2025-04-01 | 360SS |  |
| 362 | 1.7.5 | Milestone: Product Rollout | 0d | 2025-04-01 | 2025-04-01 | 352 |  |
| 363 | 1.8 | **10. Post-Launch Support and Monitoring** | 6d | 2025-04-02 | 2025-04-09 |  |  |
| 364 | 1.8.1 | **10.1. Performance Monitoring** | 3d | 2025-04-02 | 2025-04-04 |  |  |
| 365 | 1.8.1.1 | **10.1.1. Track User Engagement Metrics** | 3d | 2025-04-02 | 2025-04-04 | 353 | Kelvin Luk |
| 366 | 1.8.1.1.1 | 10.1.1.1. Define Key Performance Indicators | 1d | 2025-04-02 | 2025-04-02 |  |  |
| 367 | 1.8.1.1.2 | 10.1.1.2. Utilise Analytics Tools to Measure Engagement | 3d | 2025-04-02 | 2025-04-04 | 366SS |  |
| 368 | 1.8.1.2 | **10.1.2. Monitor System Stability** | 2d | 2025-04-02 | 2025-04-03 | 359 | Billy Tse |
| 369 | 1.8.1.2.1 | 10.1.2.1. Set Up Automated Monitoring for Server Performance | 1d | 2025-04-02 | 2025-04-02 |  |  |
| 370 | 1.8.1.2.2 | 10.1.2.2. Track Error Rates and Downtime Incidents | 2d | 2025-04-02 | 2025-04-03 | 369SS |  |
| 371 | 1.8.1.3 | **10.1.3. Identify and Resolve Issues** | 1d | 2025-04-04 | 2025-04-04 | 368 | Billy Tse |
| 372 | 1.8.1.3.1 | 10.1.3.1. Implement a Bug Tracking System | 1d | 2025-04-04 | 2025-04-04 |  |  |
| 373 | 1.8.1.3.2 | 10.1.3.2. Prioritise and Address Reported Issues Promptly | 1d | 2025-04-04 | 2025-04-04 | 372SS |  |
| 374 | 1.8.2 | **10.2. Continuous Improvement** | 3d | 2025-04-02 | 2025-04-04 |  |  |
| 375 | 1.8.2.1 | **10.2.1. Release Regular Updates** | 1d | 2025-04-02 | 2025-04-02 | 359 | Jack Chan |
| 376 | 1.8.2.1.1 | 10.2.1.1. Schedule Update Releases Based on Feedback | 1d | 2025-04-02 | 2025-04-02 |  |  |
| 377 | 1.8.2.1.2 | 10.2.1.2. Communicate Changes to Users Effectively | 1d | 2025-04-02 | 2025-04-02 | 376SS |  |
| 378 | 1.8.2.2 | **10.2.2. Implement New Features** | 1d | 2025-04-03 | 2025-04-03 | 375 | Jack Chan |
| 379 | 1.8.2.2.1 | 10.2.2.1. Gather User Suggestions for New Features | 1d | 2025-04-03 | 2025-04-03 |  |  |
| 380 | 1.8.2.2.2 | 10.2.2.2. Prioritise Feature Development Based on Demand | 1d | 2025-04-03 | 2025-04-03 | 379SS |  |

| ID | WBS | Task | Duration | Start | Finish | Predecessors | Resources |
| --- | --- | --- | --- | --- | --- | --- | --- |
| 381 | 1.8.2.3 | **10.2.3. Optimise Existing Functions** | 1d | 2025-04-04 | 2025-04-04 | 378 | Jack Chan |
| 382 | 1.8.2.3.1 | 10.2.3.1. Analyse User Feedback for Functionality Enhancements | 1d | 2025-04-04 | 2025-04-04 |  |  |
| 383 | 1.8.2.3.2 | 10.2.3.2. Conduct Performance Testing on Existing Features | 1d | 2025-04-04 | 2025-04-04 |  |  |
| 384 | 1.8.3 | **10.3. Customer Support** | 3d | 2025-04-07 | 2025-04-09 |  |  |
| 385 | 1.8.3.1 | **10.3.1. Set Up Support Channels** | 1d | 2025-04-07 | 2025-04-07 | 371 | Billy Tse |
| 386 | 1.8.3.1.1 | 10.3.1.1. Create Multiple Support Options (i.e., email, phone) | 1d | 2025-04-07 | 2025-04-07 |  |  |
| 387 | 1.8.3.1.2 | 10.3.1.2. Develop a Help Center with FAQs and Resources | 1d | 2025-04-07 | 2025-04-07 | 386SS |  |
| 388 | 1.8.3.2 | **10.3.2. Respond to User Inquiries** | 1d | 2025-04-08 | 2025-04-08 | 385 | Billy Tse |
| 389 | 1.8.3.2.1 | 10.3.2.1. Establish Response Time Guidelines for Support Requests | 1d | 2025-04-08 | 2025-04-08 |  |  |
| 390 | 1.8.3.2.2 | 10.3.2.2. Train Support Staff on Common Issues and Solutions | 1d | 2025-04-08 | 2025-04-08 | 389SS |  |
| 391 | 1.8.3.3 | **10.3.3. Manage User Feedback** | 1d | 2025-04-09 | 2025-04-09 | 388 | Billy Tse |
| 392 | 1.8.3.3.1 | 10.3.3.1. Collect Feedback via Surveys and Direct Communication | 1d | 2025-04-09 | 2025-04-09 |  |  |
| 393 | 1.8.3.3.2 | 10.3.3.2. Analyse Feedback Trends for Continuous Improvement | 1d | 2025-04-09 | 2025-04-09 | 392SS |  |
| 394 | 1.8.4 | **10.4. Reporting and Analytics** | 3d | 2025-04-07 | 2025-04-09 |  |  |
| 395 | 1.8.4.1 | **10.4.1. Generate Regular Reports** | 1d | 2025-04-07 | 2025-04-07 | 365 | Kelvin Luk |
| 396 | 1.8.4.1.1 | 10.4.1.1. Create Monthly Performance Summary Reports | 1d | 2025-04-07 | 2025-04-07 |  |  |
| 397 | 1.8.4.1.2 | 10.4.1.2. Distribute Reports to HKJC Project Team | 1d | 2025-04-07 | 2025-04-07 | 396FF |  |
| 398 | 1.8.4.2 | **10.4.2. Analyse User Behaviour** | 1d | 2025-04-08 | 2025-04-08 | 395 | Kelvin Luk |
| 399 | 1.8.4.2.1 | 10.4.2.1. Use Analytics Tools to Understand User Patterns | 1d | 2025-04-08 | 2025-04-08 |  |  |
| 400 | 1.8.4.2.2 | 10.4.2.2. Identify Areas for Improvement Based on User Data | 1d | 2025-04-08 | 2025-04-08 | 399SS |  |
| 401 | 1.8.4.3 | **10.4.3. Adjust Strategies Accordingly** | 1d | 2025-04-09 | 2025-04-09 | 398 | Kelvin Luk |
| 402 | 1.8.4.3.1 | 10.4.3.1. Review Marketing and Engagement Strategies Regularly | 1d | 2025-04-09 | 2025-04-09 |  |  |
| 403 | 1.8.4.3.2 | 10.4.3.2. Implement Changes Based on Analytical Insights | 1d | 2025-04-09 | 2025-04-09 | 402FF |  |
| 404 | 1.9 | **11. Documentation and Training** | 10d | 2025-04-07 | 2025-04-18 |  |  |
| 405 | 1.9.1 | **11.1. Technical Documentation** | 5d | 2025-04-07 | 2025-04-11 |  |  |
| 406 | 1.9.1.1 | **11.1.1. Document Codebase and Architecture** | 2d | 2025-04-10 | 2025-04-11 | 401 | Kelvin Luk |
| 407 | 1.9.1.1.1 | 11.1.1.1. Create Detailed Diagrams of System Architecture | 2d | 2025-04-10 | 2025-04-11 |  |  |
| 408 | 1.9.1.1.2 | 11.1.1.2. Write Descriptions for Key Components of the Codebase | 2d | 2025-04-10 | 2025-04-11 | 407SS |  |

| ID | WBS | Task | Duration | Start | Finish | Predecessors | Resources |
| --- | --- | --- | --- | --- | --- | --- | --- |
| 409 | 1.9.1.2 | **11.1.2. Maintain API Documentation** | 3d | 2025-04-07 | 2025-04-09 | 381 | Jack Chan |
| 410 | 1.9.1.2.1 | 11.1.2.1. Update API Documentation | 3d | 2025-04-07 | 2025-04-09 |  |  |
| 411 | 1.9.1.3 | **11.1.3. Update Documentation with Changes** | 2d | 2025-04-10 | 2025-04-11 | 409 | Jack Chan |
| 412 | 1.9.1.3.1 | 11.1.3.1. Establish a Schedule for Regular Documentation Reviews | 2d | 2025-04-10 | 2025-04-11 |  |  |
| 413 | 1.9.2 | **11.2. User Manuals and Guides** | 5d | 2025-04-10 | 2025-04-16 |  |  |
| 414 | 1.9.2.1 | **11.2.1. Create User Guide for App** | 2d | 2025-04-10 | 2025-04-11 | 391 | Billy Tse |
| 415 | 1.9.2.1.1 | 11.2.1.1. Outline Features and Functionality Clearly | 2d | 2025-04-10 | 2025-04-11 |  |  |
| 416 | 1.9.2.1.2 | 11.2.1.2. Include Step-by-Step Instructions with Screenshots | 2d | 2025-04-10 | 2025-04-11 | 415SS |  |
| 417 | 1.9.2.2 | **11.2.2. Develop FAQs and Help Resources** | 2d | 2025-04-14 | 2025-04-15 | 414 | Billy Tse |
| 418 | 1.9.2.2.1 | 11.2.2.1. Compile Common User Questions and Concerns | 1d | 2025-04-14 | 2025-04-14 |  |  |
| 419 | 1.9.2.2.2 | 11.2.2.2. Create a User-Friendly Help Section in the App | 1d | 2025-04-15 | 2025-04-15 | 418 |  |
| 420 | 1.9.2.3 | **11.2.3. Provide Educational Materials on Mental Health** | 1d | 2025-04-16 | 2025-04-16 | 417 | Billy Tse |
| 421 | 1.9.2.3.1 | 11.2.3.1. Develop Content on Mental Health Awareness and Resources | 1d | 2025-04-16 | 2025-04-16 |  |  |
| 422 | 1.9.2.3.2 | 11.2.3.2. Ensure Materials are Evidence-Based and Culturally Sensitive | 1d | 2025-04-16 | 2025-04-16 | 421FF |  |
| 423 | 1.9.2.4 | **11.2.4. Translate Materials into Multiple Languages** | 3d | 2025-04-14 | 2025-04-16 | 416 | Kelvin Luk |
| 424 | 1.9.2.4.1 | 11.2.4.1. Identify Key Languages Based on User Demographics | 3d | 2025-04-14 | 2025-04-16 |  |  |
| 425 | 1.9.2.5 | **11.2.5. Include Links to Professional Help and Emergency Contacts** | 1d | 2025-04-14 | 2025-04-14 | 411 | Jack Chan |
| 426 | 1.9.2.5.1 | 11.2.5.1. Curate a List of Reliable Mental Health Resources | 1d | 2025-04-14 | 2025-04-14 |  |  |
| 427 | 1.9.2.5.2 | 11.2.5.2. Ensure Accessibility of Emergency Contact Information | 1d | 2025-04-14 | 2025-04-14 | 426SS |  |
| 428 | 1.9.3 | **11.3. Team Training** | 4d | 2025-04-15 | 2025-04-18 |  |  |
| 429 | 1.9.3.1 | **11.3.1. Train Support Staff** | 4d | 2025-04-15 | 2025-04-18 | 425 | Jack Chan |
| 430 | 1.9.3.1.1 | 11.3.1.1. Develop Training Programs Focused on Product Knowledge | 2d | 2025-04-15 | 2025-04-16 |  |  |
| 431 | 1.9.3.1.2 | 11.3.1.2. Conduct Role-Playing Scenarios for Customer Interaction | 2d | 2025-04-17 | 2025-04-18 | 430 |  |
| 432 | 1.9.3.2 | **11.3.2. Conduct Knowledge Transfer Sessions** | 2d | 2025-04-17 | 2025-04-18 | 420 | Billy Tse |
| 433 | 1.9.3.2.1 | 11.3.2.1. Schedule Regular Meetings for Sharing Insights and Updates | 1d | 2025-04-17 | 2025-04-17 |  |  |
| 434 | 1.9.3.2.2 | 11.3.2.2. Document Key Takeaways from Each Session | 1d | 2025-04-18 | 2025-04-18 | 433 |  |

| ID | WBS | Task | Duration | Start | Finish | Predecessors | Resources |
| --- | --- | --- | --- | --- | --- | --- | --- |
| 435 | 1.9.3.3 | **11.3.3. Update Team on New Features** | 2d | 2025-04-17 | 2025-04-18 | 423 | Kelvin Luk |
| 436 | 1.9.3.3.1 | 11.3.3.1. Create Release Notes for New Updates | 1d | 2025-04-17 | 2025-04-17 |  |  |
| 437 | 1.9.3.3.2 | 11.3.3.2. Host Workshops to Demonstrate New Features | 1d | 2025-04-18 | 2025-04-18 | 436 |  |
| 438 | 1.9.4 | Milestone: System Training and Ongoing Support | 0d | 2025-04-18 | 2025-04-18 | 428 |  |
| 439 | 1.10 | **12. Project Closure** | 6d | 2025-04-21 | 2025-04-28 |  |  |
| 440 | 1.10.1 | **12.1. Final Evaluation** | 2d | 2025-04-21 | 2025-04-22 |  |  |
| 441 | 1.10.1.1 | **12.1.1. Review Project Objectives** | 2d | 2025-04-21 | 2025-04-22 | 435 | Kelvin Luk |
| 442 | 1.10.1.1.1 | 12.1.1.1. Conduct a Comprehensive Review of Initial Goals | 1d | 2025-04-21 | 2025-04-21 |  |  |
| 443 | 1.10.1.1.2 | 12.1.1.2. Evaluate Success Metrics Against Objectives | 1d | 2025-04-22 | 2025-04-22 | 442 |  |
| 444 | 1.10.1.2 | **12.1.2. Assess Deliverables Against Plan** | 2d | 2025-04-21 | 2025-04-22 | 435 | Billy Tse |
| 445 | 1.10.1.2.1 | 12.1.2.1. Compile a List of All Deliverables | 1d | 2025-04-21 | 2025-04-21 |  |  |
| 446 | 1.10.1.2.2 | 12.1.2.2. Compare Deliverables to the Project Plan for Completeness | 1d | 2025-04-22 | 2025-04-22 | 445 |  |
| 447 | 1.10.2 | **12.2. Stakeholder Communication** | 5d | 2025-04-21 | 2025-04-25 |  |  |
| 448 | 1.10.2.1 | **12.2.1. Prepare Final Reports** | 2d | 2025-04-21 | 2025-04-22 | 435 | Jack Chan |
| 449 | 1.10.2.1.1 | 12.2.1.1. Create a Summary Report Highlighting Key Findings | 2d | 2025-04-21 | 2025-04-22 |  |  |
| 450 | 1.10.2.1.2 | 12.2.1.2. Include Lessons Learned and Best Practices | 2d | 2025-04-21 | 2025-04-22 | 449SS |  |
| 451 | 1.10.2.2 | **12.2.2. Present Outcomes to Sponsors** | 1d | 2025-04-23 | 2025-04-23 | 448 | Billy Tse; Jack Chan; Kelvin Luk |
| 452 | 1.10.2.2.1 | 12.2.2.1. Presentation Meeting with HKJC Project Team | 1d | 2025-04-23 | 2025-04-23 |  |  |
| 453 | 1.10.2.3 | **12.2.3. Obtain Formal Acceptance** | 2d | 2025-04-24 | 2025-04-25 | 451 | Kelvin Luk |
| 454 | 1.10.2.3.1 | 12.2.3.1. Prepare Acceptance Criteria for Project Completion | 1d | 2025-04-24 | 2025-04-24 |  |  |
| 455 | 1.10.2.3.2 | 12.2.3.2. Document Sponsor Sign-offs on Deliverables | 1d | 2025-04-25 | 2025-04-25 | 454 |  |
| 456 | 1.10.3 | **12.3. Administrative Closure** | 1d | 2025-04-25 | 2025-04-28 |  |  |
| 457 | 1.10.3.1 | **12.3.1. Release Project Resources** | 0d | 2025-04-25 | 2025-04-25 | 453 | Kelvin Luk |
| 458 | 1.10.3.1.1 | 12.3.1.1. Reassign Team Members to New Projects | 0d | 2025-04-25 | 2025-04-25 |  |  |
| 459 | 1.10.3.1.2 | 12.3.1.2. Release Equipment and Software Licenses | 0d | 2025-04-25 | 2025-04-25 |  |  |

| ID | WBS | Task | Duration | Start | Finish | Predecessors | Resources |
| --- | --- | --- | --- | --- | --- | --- | --- |
| 460 | 1.10.3.2 | **12.3.2. Close Contracts and Agreements** | 1d | 2025-04-28 | 2025-04-28 | 453 | Kelvin Luk |
| 461 | 1.10.3.2.1 | 12.3.2.1. Review All Contracts for Completion | 1d | 2025-04-28 | 2025-04-28 |  |  |
| 462 | 1.10.3.2.2 | 12.3.2.2. Ensure All Financial Obligations are Settled | 0d | 2025-04-28 | 2025-04-28 | 461SS |  |
